# 旅游平台WBS

How a schedule from MS Project changed from version to version. A marks actual dates.

## Version 1 (saved 2019-03-24)

Note of the change: 规划

| ID | WBS | Task | Duration | Start | Finish |
| --- | --- | --- | --- | --- | --- |
| 1 | 1 | **启动** | 1d? | 2019-03-22 | 2019-03-22 |
| 2 |  | 任命项目经理 | 1d? | 2019-03-22 | 2019-03-22 |
| 3 |  | 组建核心团队 | 1d? | 2019-03-22 | 2019-03-22 |
| 4 |  | 制定时间计划及里程碑 | 1d? | 2019-03-22 | 2019-03-22 |
| 5 |  | 分析干系人 | 1d? | 2019-03-22 | 2019-03-22 |
| 6 |  | 制定项目章程 | 1d? | 2019-03-22 | 2019-03-22 |
| 7 |  | 项目启动大会 | 1d? | 2019-03-22 | 2019-03-22 |
| 8 | 2 | **规划** | 1d? | 2019-03-22 | 2019-03-22 |
| 9 | 2.1 | **规划范围** | 1d? | 2019-03-22 | 2019-03-22 |
| 10 |  | 制定需求说明书 | 1d? | 2019-03-22 | 2019-03-22 |
| 11 |  | 界面设计 | 1d? | 2019-03-22 | 2019-03-22 |
| 12 |  | 详细设计说明书 | 1d? | 2019-03-22 | 2019-03-22 |
| 13 |  | 范围说明书 | 1d? | 2019-03-22 | 2019-03-22 |
| 14 |  | 创建WBS | 1d? | 2019-03-22 | 2019-03-22 |
| 15 |  | 形成范围基准 | 1d? | 2019-03-22 | 2019-03-22 |
| 16 | 2.2 | **规划时间** | 1d? | 2019-03-22 | 2019-03-22 |
| 17 |  | 排列工作包顺序 | 1d? | 2019-03-22 | 2019-03-22 |
| 18 |  | 估算资源 | 1d? | 2019-03-22 | 2019-03-22 |
| 19 |  | 估算持续时间 | 1d? | 2019-03-22 | 2019-03-22 |
| 20 |  | 制定进度计划 | 1d? | 2019-03-22 | 2019-03-22 |
| 21 | 2.3 | **规划成本** | 1d? | 2019-03-22 | 2019-03-22 |
| 22 |  | 项目成本估算 | 1d? | 2019-03-22 | 2019-03-22 |
| 23 |  | 项目预算 | 1d? | 2019-03-22 | 2019-03-22 |
| 24 | 2.4 | **规划质量** | 1d? | 2019-03-22 | 2019-03-22 |
| 25 |  | 制定测试计划 | 1d? | 2019-03-22 | 2019-03-22 |
| 26 |  | 制定测试用例 | 1d? | 2019-03-22 | 2019-03-22 |
| 27 | 2.5 | **规划人力资源** | 1d? | 2019-03-22 | 2019-03-22 |
| 28 |  | 制定人力资源计划 | 1d? | 2019-03-22 | 2019-03-22 |
| 29 |  | 制定人员配备管理计划 | 1d? | 2019-03-22 | 2019-03-22 |
| 30 | 2.6 | **规划沟通** | 1d? | 2019-03-22 | 2019-03-22 |
| 31 |  | 制定沟通管理计划 | 1d? | 2019-03-22 | 2019-03-22 |
| 32 | 2.7 | **规划采购** | 1d? | 2019-03-22 | 2019-03-22 |
| 33 |  | 自制外购分析 | 1d? | 2019-03-22 | 2019-03-22 |
| 34 |  | 制定采购计划 | 1d? | 2019-03-22 | 2019-03-22 |
| 35 | 2.8 | **规划风险** | 1d? | 2019-03-22 | 2019-03-22 |
| 36 |  | 识别风险 | 1d? | 2019-03-22 | 2019-03-22 |
| 37 |  | 风险分析 | 1d? | 2019-03-22 | 2019-03-22 |
| 38 |  | 制定风险登记册 | 1d? | 2019-03-22 | 2019-03-22 |
| 39 |  | 规划整合 | 1d? | 2019-03-22 | 2019-03-22 |
| 40 | 3 | **执行与监控** | 1d? | 2019-03-22 | 2019-03-22 |
| 41 |  | 组建项目团队 | 1d? | 2019-03-22 | 2019-03-22 |
| 42 | 3.2 | **项目执行** | 1d? | 2019-03-22 | 2019-03-22 |
| 43 | 3.2.1 | **游客模块** | 1d? | 2019-03-22 | 2019-03-22 |
| 44 |  | 登录注册 | 1d? | 2019-03-22 | 2019-03-22 |
| 45 |  | 发布期望导游信息 | 1d? | 2019-03-22 | 2019-03-22 |
| 46 |  | 搜索导游信息 | 1d? | 2019-03-22 | 2019-03-22 |
| 47 |  | 评价反馈 | 1d? | 2019-03-22 | 2019-03-22 |
| 48 |  | 个人信息页面 | 1d? | 2019-03-22 | 2019-03-22 |
| 49 |  | 支付定金 | 1d? | 2019-03-22 | 2019-03-22 |
| 50 | 3.2.2 | **导游模块** | 1d? | 2019-03-22 | 2019-03-22 |
| 51 |  | 导游认证 | 1d? | 2019-03-22 | 2019-03-22 |
| 52 |  | 发布旅游解说信息 | 1d? | 2019-03-22 | 2019-03-22 |
| 53 |  | 导游信息页面 | 1d? | 2019-03-22 | 2019-03-22 |
| 54 |  | 领取工资 | 1d? | 2019-03-22 | 2019-03-22 |
| 55 | 3.2.3 | **管理员模块** | 1d? | 2019-03-22 | 2019-03-22 |
| 56 |  | 导游审核 | 1d? | 2019-03-22 | 2019-03-22 |
| 57 |  | 流量统计 | 1d? | 2019-03-22 | 2019-03-22 |
| 58 |  | 数据备份 | 1d? | 2019-03-22 | 2019-03-22 |
| 59 | 3.3 | **项目监控** | 1d? | 2019-03-22 | 2019-03-22 |
| 60 |  | 各项指标监控 | 1d? | 2019-03-22 | 2019-03-22 |
| 61 |  | 监控 | 1d? | 2019-03-22 | 2019-03-22 |
| 62 |  | 变更监控 | 1d? | 2019-03-22 | 2019-03-22 |
| 63 |  | 例会 | 1d? | 2019-03-22 | 2019-03-22 |
| 64 | 3.4 | **管理干系人** | 1d? | 2019-03-22 | 2019-03-22 |
| 65 |  | 发布项目信息 | 1d? | 2019-03-22 | 2019-03-22 |
| 66 |  | 报告项目信息 | 1d? | 2019-03-22 | 2019-03-22 |
| 67 |  | 报告监控指标 | 1d? | 2019-03-22 | 2019-03-22 |
| 68 |  | 干系人沟通 | 1d? | 2019-03-22 | 2019-03-22 |
| 69 | 3.5 | **团队建设** | 1d? | 2019-03-22 | 2019-03-22 |
| 70 |  | 培训 | 1d? | 2019-03-22 | 2019-03-22 |

| ID | WBS | Task | Duration | Start | Finish |
| --- | --- | --- | --- | --- | --- |
| 71 |  | 娱乐活动 | 1d? | 2019-03-22 | 2019-03-22 |
| 72 |  | 沟通 | 1d? | 2019-03-22 | 2019-03-22 |
| 73 |  | 采购 | 1d? | 2019-03-22 | 2019-03-22 |
| 74 |  | 项目验收 | 1d? | 2019-03-22 | 2019-03-22 |
| 75 | 4 | **收尾** | 1d? | 2019-03-22 | 2019-03-22 |
| 76 |  | 项目终验 | 1d? | 2019-03-22 | 2019-03-22 |
| 77 |  | 结束采购 | 1d? | 2019-03-22 | 2019-03-22 |
| 78 |  | 项目内部收尾 | 1d? | 2019-03-22 | 2019-03-22 |

## Version 2 (saved 2019-03-29)

Note of the change: Merge branch 'master' of https://github.com/zyq-361/IT-Project-Management

Last finish 2019-03-22 → 2019-06-27 (+97d).

Removed: 66 报告项目信息

Changed:

| ID | Task | Start | Finish | Duration | Total float | Predecessors | Other |
| --- | --- | --- | --- | --- | --- | --- | --- |
| 1 | **启动** | 2019-03-22 → 2019-03-29 (+7d) | 2019-03-22 → 2019-04-08 (+17d) | 1d? → 7d |  |  |  |
| 2 | 任命项目经理 | 2019-03-22 → 2019-03-29 (+7d) | 2019-03-22 → 2019-03-29 (+7d) | 1d? → 1d | none → 4d |  | constraint none → start no earlier than 2019-03-29 |
| 3 | 组建核心团队 | 2019-03-22 → 2019-04-01 (+10d) | 2019-03-22 → 2019-04-01 (+10d) | 1d? → 1d | none → 3d |  | constraint none → start no earlier than 2019-04-01; resources none → UI设计师; 产品经理; 开发工程师1; 测试工程师1; 项目经理; 需求专家; 架构师; 质量专家; 开发工程师3; 开发工程师2; 测试工程师2 |
| 4 | 制定时间计划及里程碑 | 2019-03-22 → 2019-04-02 (+11d) | 2019-03-22 → 2019-04-02 (+11d) | 1d? → 1d | none → 2d |  | constraint none → start no earlier than 2019-04-02; resources none → 项目经理 |
| 5 | 分析干系人 | 2019-03-22 → 2019-04-03 (+12d) | 2019-03-22 → 2019-04-04 (+13d) | 1d? → 2d | none → 0d |  | constraint none → start no earlier than 2019-04-03; resources none → 项目经理 |
| 6 | 制定项目章程 | 2019-03-22 → 2019-04-05 (+14d) | 2019-03-22 → 2019-04-05 (+14d) |  | none → 0d | none → 2, 3, 4, 5 | resources none → 项目经理 |
| 7 | 项目启动大会 | 2019-03-22 → 2019-04-08 (+17d) | 2019-03-22 → 2019-04-08 (+17d) | 1d? → 1d | none → 0d | none → 6 |  |
| 8 | **规划** | 2019-03-22 → 2019-04-09 (+18d) | 2019-03-22 → 2019-06-10 (+80d) | 1d? → 45d |  |  |  |
| 9 | **规划范围** | 2019-03-22 → 2019-04-09 (+18d) | 2019-03-22 → 2019-04-30 (+39d) | 1d? → 16d | none → 2d |  |  |
| 10 | 制定需求说明书 | 2019-03-22 → 2019-04-09 (+18d) | 2019-03-22 → 2019-04-18 (+27d) | 1d? → 8d | none → 1d | none → 7 | resources none → 需求专家; 产品经理 |
| 11 | 界面设计 | 2019-03-22 → 2019-04-19 (+28d) | 2019-03-22 → 2019-04-25 (+34d) | 1d? → 5d | none → 1d | none → 10 | resources none → UI设计师 |
| 12 | 详细设计说明书 | 2019-03-22 → 2019-04-19 (+28d) | 2019-03-22 → 2019-04-25 (+34d) | 1d? → 5d | none → 1d | none → 10 | resources none → 产品经理; 架构师 |
| 13 | 范围说明书 | 2019-03-22 → 2019-04-19 (+28d) | 2019-03-22 → 2019-04-23 (+32d) | 1d? → 3d | none → 3d | none → 10 | resources none → 项目经理 |
| 14 | 创建WBS | 2019-03-22 → 2019-04-26 (+35d) | 2019-03-22 → 2019-04-29 (+38d) | 1d? → 2d | none → 1d | none → 11, 12, 13 | resources none → 项目经理 |
| 15 | 形成范围基准 | 2019-03-22 → 2019-04-30 (+39d) | 2019-03-22 → 2019-04-30 (+39d) | 1d? → 1d | none → 1d | none → 14 | resources none → 项目经理 |
| 16 | **规划时间** | 2019-03-22 → 2019-05-01 (+40d) | 2019-03-22 → 2019-05-10 (+49d) | 1d? → 8d |  |  |  |
| 17 | 排列工作包顺序 | 2019-03-22 → 2019-05-01 (+40d) | 2019-03-22 → 2019-05-01 (+40d) | 1d? → 1d | none → 1d | none → 15 | resources none → 项目经理 |
| 18 | 估算资源 | 2019-03-22 → 2019-05-02 (+41d) | 2019-03-22 → 2019-05-03 (+42d) | 1d? → 2d | none → 1d | none → 17 | resources none → 项目经理 |
| 19 | 估算持续时间 | 2019-03-22 → 2019-05-07 (+46d) | 2019-03-22 → 2019-05-08 (+47d) | 1d? → 2d | none → 1d | none → 18 | constraint none → start no earlier than 2019-05-07; resources none → 项目经理 |
| 20 | 制定进度计划 | 2019-03-22 → 2019-05-09 (+48d) | 2019-03-22 → 2019-05-09 (+48d) | 1d? → 1d | none → 1d | none → 19 | constraint none → start no earlier than 2019-05-09; resources none → 项目经理 |
| 21 | **规划成本** | 2019-03-22 → 2019-05-10 (+49d) | 2019-03-22 → 2019-05-17 (+56d) | 1d? → 6d |  |  |  |
| 22 | 项目成本估算 | 2019-03-22 → 2019-05-10 (+49d) | 2019-03-22 → 2019-05-14 (+53d) | 1d? → 3d | none → 1d | none → 20 | resources none → 项目经理 |
| 23 | 项目预算 | 2019-03-22 → 2019-05-15 (+54d) | 2019-03-22 → 2019-05-16 (+55d) | 1d? → 2d | none → 1d | none → 22 | resources none → 项目经理 |
| 24 | **规划质量** | 2019-03-22 → 2019-05-01 (+40d) | 2019-03-22 → 2019-05-10 (+49d) | 1d? → 8d | none → 17d |  |  |
| 25 | 制定测试计划 | 2019-03-22 → 2019-05-01 (+40d) | 2019-03-22 → 2019-05-02 (+41d) | 1d? → 2d | none → 17d | none → 15 | resources none → 质量专家 |
| 26 | 制定测试用例 | 2019-03-22 → 2019-05-03 (+42d) | 2019-03-22 → 2019-05-10 (+49d) | 1d? → 6d | none → 17d | none → 25 | resources none → 质量专家 |
| 27 | **规划人力资源** | 2019-03-22 → 2019-05-17 (+56d) | 2019-03-22 → 2019-05-22 (+61d) | 1d? → 4d |  |  |  |
| 28 | 制定人力资源计划 | 2019-03-22 → 2019-05-17 (+56d) | 2019-03-22 → 2019-05-20 (+59d) | 1d? → 2d | none → 0d | none → 18 | constraint none → start no earlier than 2019-05-17; resources none → 项目经理 |
| 29 | 制定人员配备管理计划 | 2019-03-22 → 2019-05-21 (+60d) | 2019-03-22 → 2019-05-22 (+61d) | 1d? → 2d | none → 0d | none → 28 | resources none → 项目经理 |
| 30 | **规划沟通** | 2019-03-22 → 2019-05-23 (+62d) | 2019-03-22 → 2019-05-24 (+63d) | 1d? → 2d | none → 7d |  |  |
| 31 | 制定沟通管理计划 | 2019-03-22 → 2019-05-23 (+62d) | 2019-03-22 → 2019-05-24 (+63d) | 1d? → 2d | none → 7d | none → 29 | resources none → 项目经理 |
| 32 | **规划采购** | 2019-03-22 → 2019-05-27 (+66d) | 2019-03-22 → 2019-05-30 (+69d) | 1d? → 4d | none → 3d |  |  |
| 33 | 自制外购分析 | 2019-03-22 → 2019-05-27 (+66d) | 2019-03-22 → 2019-05-27 (+66d) | 1d? → 1d | none → 3d | none → 18 | constraint none → start no earlier than 2019-05-27; resources none → 项目经理 |
| 34 | 制定采购计划 | 2019-03-22 → 2019-05-28 (+67d) | 2019-03-22 → 2019-05-30 (+69d) | 1d? → 3d | none → 3d | none → 33 | resources none → 项目经理 |
| 35 | **规划风险** | 2019-03-22 → 2019-05-31 (+70d) | 2019-03-22 → 2019-06-04 (+74d) | 1d? → 3d | none → 3d |  |  |
| 36 | 识别风险 | 2019-03-22 → 2019-05-31 (+70d) | 2019-03-22 → 2019-05-31 (+70d) | 1d? → 1d | none → 3d | none → 16, 21, 24, 27, 30, 32 | resources none → 项目经理 |
| 37 | 风险分析 | 2019-03-22 → 2019-06-03 (+73d) | 2019-03-22 → 2019-06-03 (+73d) | 1d? → 1d | none → 3d | none → 36 | resources none → 项目经理 |
| 38 | 制定风险登记册 | 2019-03-22 → 2019-06-04 (+74d) | 2019-03-22 → 2019-06-04 (+74d) | 1d? → 1d | none → 3d | none → 37 | resources none → 项目经理 |
| 39 | 规划整合 | 2019-03-22 → 2019-06-05 (+75d) | 2019-03-22 → 2019-06-05 (+75d) | 1d? → 1d | none → 3d | none → 38 | resources none → 项目经理 |
| 40 | **执行与监控** | 2019-03-22 → 2019-05-06 (+45d) | 2019-03-22 → 2019-06-21 (+91d) | 1d? → 35d | none → 0d |  |  |
| 41 | 组建项目团队 | 2019-03-22 → 2019-05-06 (+45d) | 2019-03-22 → 2019-05-06 (+45d) | 1d? → 1d | none → 3d | none → 18 | constraint none → start no earlier than 2019-05-06; resources none → 测试工程师1; 开发工程师1; 项目经理; 测试工程师2; 开发工程师2; 开发工程师3 |
| 42 | **项目执行** | 2019-03-22 → 2019-05-06 (+45d) | 2019-03-22 → 2019-05-17 (+56d) | 1d? → 10d |  |  |  |
| 43 | **游客模块** | 2019-03-22 → 2019-05-06 (+45d) | 2019-03-22 → 2019-05-17 (+56d) | 1d? → 10d |  |  |  |
| 44 | 登录注册 | 2019-03-22 → 2019-05-07 (+46d) | 2019-03-22 → 2019-05-07 (+46d) | 1d? → 1d | none → 3d | none → 41 | resources none → 开发工程师1 |
| 45 | 发布期望导游信息 | 2019-03-22 → 2019-05-08 (+47d) | 2019-03-22 → 2019-05-08 (+47d) | 1d? → 1d | none → 3d | none → 44 | resources none → 开发工程师1 |
| 46 | 搜索导游信息 | 2019-03-22 → 2019-05-09 (+48d) | 2019-03-22 → 2019-05-09 (+48d) | 1d? → 1d | none → 3d | none → 45 | resources none → 开发工程师1 |
| 47 | 评价反馈 | 2019-03-22 → 2019-05-10 (+49d) | 2019-03-22 → 2019-05-10 (+49d) | 1d? → 1d | none → 3d | none → 46 | resources none → 开发工程师1 |
| 48 | 个人信息页面 | 2019-03-22 → 2019-05-13 (+52d) | 2019-03-22 → 2019-05-13 (+52d) | 1d? → 1d | none → 3d | none → 47 | resources none → 开发工程师1 |
| 49 | 支付定金 | 2019-03-22 → 2019-05-14 (+53d) | 2019-03-22 → 2019-05-14 (+53d) | 1d? → 1d | none → 3d | none → 48 | resources none → 开发工程师1 |
| 50 | **导游模块** | 2019-03-22 → 2019-05-07 (+46d) | 2019-03-22 → 2019-05-10 (+49d) | 1d? → 4d | none → 5d |  |  |
| 51 | 导游认证 | 2019-03-22 → 2019-05-07 (+46d) | 2019-03-22 → 2019-05-07 (+46d) | 1d? → 1d | none → 5d | none → 41 | resources none → 开发工程师2 |
| 52 | 发布旅游解说信息 | 2019-03-22 → 2019-05-08 (+47d) | 2019-03-22 → 2019-05-08 (+47d) | 1d? → 1d | none → 5d | none → 51 | resources none → 开发工程师2 |
| 53 | 导游信息页面 | 2019-03-22 → 2019-05-09 (+48d) | 2019-03-22 → 2019-05-09 (+48d) | 1d? → 1d | none → 5d | none → 52 | resources none → 开发工程师2 |
| 54 | 领取工资 | 2019-03-22 → 2019-05-10 (+49d) | 2019-03-22 → 2019-05-10 (+49d) | 1d? → 1d | none → 5d | none → 53 | resources none → 开发工程师2 |
| 55 | **管理员模块** | 2019-03-22 → 2019-05-07 (+46d) | 2019-03-22 → 2019-05-09 (+48d) | 1d? → 3d | none → 6d |  |  |
| 56 | 导游审核 | 2019-03-22 → 2019-05-07 (+46d) | 2019-03-22 → 2019-05-07 (+46d) | 1d? → 1d | none → 6d | none → 41 | resources none → 开发工程师3 |
| 57 | 流量统计 | 2019-03-22 → 2019-05-08 (+47d) | 2019-03-22 → 2019-05-08 (+47d) | 1d? → 1d | none → 6d | none → 56 | resources none → 开发工程师3 |
| 58 | 数据备份 | 2019-03-22 → 2019-05-09 (+48d) | 2019-03-22 → 2019-05-09 (+48d) | 1d? → 1d | none → 6d | none → 57 | resources none → 开发工程师3 |
| 59 | **项目监控** | 2019-03-22 → 2019-06-06 (+76d) | 2019-03-22 → 2019-06-11 (+81d) | 1d? → 4d | none → 12d |  |  |
| 60 | 各项指标监控 | 2019-03-22 → 2019-06-06 (+76d) | 2019-03-22 → 2019-06-06 (+76d) | 1d? → 1d | none → 13d | none → 41 | constraint none → start no earlier than 2019-06-06; resources none → 测试工程师1; 测试工程师2; 项目经理 |
| 61 | 监控评审 | 2019-03-22 → 2019-06-07 (+77d) | 2019-03-22 → 2019-06-07 (+77d) | 1d? → 1d | none → 13d | none → 60 | was named 监控; resources none → UI设计师; 产品经理; 架构师; 项目经理; 需求专家; 质量专家 |
| 62 | 变更评审 | 2019-03-22 → 2019-06-10 (+80d) | 2019-03-22 → 2019-06-10 (+80d) | 1d? → 1d | none → 13d | none → 61 | was named 变更监控; resources none → UI设计师; 产品经理; 架构师; 项目经理; 需求专家; 质量专家 |
| 63 | 例会 | 2019-03-22 → 2019-06-11 (+81d) | 2019-03-22 → 2019-06-11 (+81d) | 1d? → 1d | none → 12d | none → 41 | constraint none → start no earlier than 2019-06-11; resources none → UI设计师; 测试工程师1; 测试工程师2; 产品经理; 架构师; 开发工程师1; 开发工程师2; 开发工程师3; 项目经理; 需求专家; 质量专家 |
| 64 | **管理干系人** | 2019-03-22 → 2019-06-12 (+82d) | 2019-03-22 → 2019-06-14 (+84d) | 1d? → 3d | none → 9d |  |  |
| 65 | 发布项目信息 | 2019-03-22 → 2019-06-12 (+82d) | 2019-03-22 → 2019-06-12 (+82d) | 1d? → 1d | none → 11d | none → 41 | constraint none → start no earlier than 2019-06-12; resources none → 项目经理 |
| 66 | 报告监控指标 | 2019-03-22 → 2019-06-13 (+83d) | 2019-03-22 → 2019-06-13 (+83d) | 1d? → 1d | none → 10d | none → 41 | constraint none → start no earlier than 2019-06-13; resources none → 项目经理 |
| 67 | 干系人沟通 | 2019-03-22 → 2019-06-14 (+84d) | 2019-03-22 → 2019-06-14 (+84d) | 1d? → 1d | none → 9d | none → 41 | constraint none → start no earlier than 2019-06-14; resources none → 项目经理 |
| 68 | **团队建设** | 2019-03-22 → 2019-06-17 (+87d) | 2019-03-22 → 2019-06-19 (+89d) | 1d? → 3d |  |  |  |
| 69 | 培训 | 2019-03-22 → 2019-06-17 (+87d) | 2019-03-22 → 2019-06-17 (+87d) | 1d? → 1d | none → 2d | none → 41 | resources none → UI设计师; 测试工程师1; 测试工程师2; 产品经理; 架构师; 开发工程师1; 开发工程师2; 开发工程师3; 项目经理; 需求专家; 质量专家 |
| 70 | 娱乐活动 | 2019-03-22 → 2019-06-18 (+88d) | 2019-03-22 → 2019-06-18 (+88d) | 1d? → 1d | none → 0d | none → 41 | constraint none → start no earlier than 2019-06-18; resources none → UI设计师; 测试工程师1; 测试工程师2; 产品经理; 架构师; 开发工程师1; 开发工程师2; 开发工程师3; 项目经理; 需求专家; 质量专家 |

| ID | Task | Start | Finish | Duration | Total float | Predecessors | Other |
| --- | --- | --- | --- | --- | --- | --- | --- |
| 71 | 沟通 | 2019-03-22 → 2019-06-19 (+89d) | 2019-03-22 → 2019-06-19 (+89d) | 1d? → 1d | none → 0d | none → 70 | resources none → UI设计师; 测试工程师1; 测试工程师2; 产品经理; 架构师; 开发工程师1; 开发工程师2; 开发工程师3; 项目经理; 需求专家; 质量专家 |
| 72 | 采购 | 2019-03-22 → 2019-06-20 (+90d) | 2019-03-22 → 2019-06-20 (+90d) | 1d? → 1d | none → 5d |  | constraint none → start no earlier than 2019-06-20; resources none → 项目经理 |
| 73 | 项目验收 | 2019-03-22 → 2019-06-21 (+91d) | 2019-03-22 → 2019-06-21 (+91d) | 1d? → 1d | none → 3d | none → 42 | constraint none → start no earlier than 2019-06-21; resources none → UI设计师; 产品经理; 架构师; 项目经理; 需求专家; 质量专家 |
| 74 | **收尾** | 2019-03-22 → 2019-06-24 (+94d) | 2019-03-22 → 2019-06-27 (+97d) | 1d? → 4d |  |  |  |
| 75 | 项目终验 | 2019-03-22 → 2019-06-24 (+94d) | 2019-03-22 → 2019-06-24 (+94d) | 1d? → 1d | none → 3d | none → 73 | resources none → UI设计师; 产品经理; 架构师; 项目经理; 需求专家; 质量专家 |
| 76 | 结束采购 | 2019-03-22 → 2019-06-25 (+95d) | 2019-03-22 → 2019-06-25 (+95d) | 1d? → 1d | none → 2d | none → 73 | constraint none → start no earlier than 2019-06-25; resources none → 项目经理 |
| 77 | 项目内部收尾 | 2019-03-22 → 2019-06-26 (+96d) | 2019-03-22 → 2019-06-26 (+96d) | 1d? → 1d | none → 1d | none → 73 | constraint none → start no earlier than 2019-06-26; resources none → UI设计师; 测试工程师1; 测试工程师2; 产品经理; 架构师; 开发工程师1; 开发工程师2; 开发工程师3; 项目经理; 需求专家; 质量专家 |

## Version 3 (saved 2019-04-12)

Note of the change: 成本估算

Last finish stays 2019-06-27. Complete tasks 0 → 3.

Changed:

| ID | Task | Start | Finish | Complete | Total float |
| --- | --- | --- | --- | --- | --- |
| 1 | **启动** | 2019-03-29 A |  | 0% → 25% |  |
| 2 | 任命项目经理 | 2019-03-29 A | 2019-03-29 A | 0% → 100% | 4d → none |
| 3 | 组建核心团队 | 2019-04-01 A |  | 0% → 75% |  |
| 8 | **规划** | 2019-04-09 A |  | 0% → 5% |  |
| 9 | **规划范围** | 2019-04-09 A |  | 0% → 12% |  |
| 10 | 制定需求说明书 | 2019-04-09 A |  | 0% → 35% | 1d → 2d |
| 40 | **执行与监控** | 2019-05-06 A |  | 0% → 9% | 0d → 4d |
| 68 | **团队建设** | 2019-06-17 A |  | 0% → 75% |  |
| 69 | 培训 | 2019-06-17 A | 2019-06-17 A | 0% → 100% | 2d → none |
| 70 | 娱乐活动 | 2019-06-18 A | 2019-06-18 A | 0% → 100% | 0d → none |
| 71 | 沟通 | 2019-06-19 A |  | 0% → 25% |  |
